Schedule from MS Project, 2011-10-04 to 2011-10-22.
bingosoft

## Calendars

- 标准: Mon-Fri 08:00-12:00, 13:00-17:00; Sat-Sun off. Exceptions (off unless hours are given): 2011-10-08 to 2011-10-09 08:00-12:00, 13:00-17:00, 2011-10-15 to 2011-10-16 08:00-12:00, 13:00-17:00, 2011-10-22 08:00-12:00, 13:00-17:00.

## Resources

| Resource |
| --- |
| 杨红康 |
| 刘征占 |
| 郑国江 |

## Schedule

| ID | WBS | Task | Type | Duration | Start | Finish | Predecessors | Total slack | Free slack | Constraint | Resources | Work |
| --- | --- | --- | --- | --- | --- | --- | --- | --- | --- | --- | --- | --- |
| 1 | 1 | **管网SACADA系统** |  | 17.5d? | 2011-10-04 | 2011-10-22 |  | 0d |  |  |  | 784h |
| 2 | 1.1 | 项目前期 |  | 2.5d | 2011-10-04 | 2011-10-06 |  | 15d |  | finish no earlier than 2011-10-06 | 刘征占; 杨红康 | 40h |
| 3 | 1.2 | **演示系统开发** |  | 17d? | 2011-10-05 | 2011-10-22 |  | 0d |  |  |  | 744h |
| 4 | 1.2.1 | **登录和主页设计** |  | 3d? | 2011-10-07 | 2011-10-09 |  | 3d |  |  | 刘征占; 杨红康 | 80h |
| 5 | 1.2.1.1 | 登录页面设计 |  | 1d? | 2011-10-07 | 2011-10-07 |  | 9d | 0d | start no earlier than 2011-10-07 | 刘征占 | 8h |
| 6 | 1.2.1.2 | 主页设计 |  | 3d | 2011-10-07 | 2011-10-09 |  | 8d | 0d | start no earlier than 2011-10-07 | 杨红康 | 24h |
| 7 | 1.2.2 | **权限部分** |  | 4d? | 2011-10-13 | 2011-10-16 |  | 3d |  |  | 刘征占 | 64h |
| 8 | 1.2.2.1 | 组织结构管理 |  | 1d | 2011-10-13 | 2011-10-13 | 36 | 3d | 0d | start no earlier than 2011-10-13 | 刘征占 | 8h |
| 9 | 1.2.2.2 | 用户管理 |  | 1d | 2011-10-14 | 2011-10-14 | 8 | 3d | 0d | start no earlier than 2011-10-14 | 刘征占 | 8h |
| 10 | 1.2.2.3 | 角色管理 |  | 1d | 2011-10-15 | 2011-10-15 | 9 | 3d | 0d | start no earlier than 2011-10-15 | 刘征占 | 8h |
| 11 | 1.2.2.4 | 模块管理 |  | 0.5d | 2011-10-16 | 2011-10-16 | 10 | 3d | 0d | start no earlier than 2011-10-16 | 刘征占 | 4h |
| 12 | 1.2.2.5 | 角色授权 |  | 0.5d? | 2011-10-16 | 2011-10-16 | 11 | 3d | 0d | start no earlier than 2011-10-16 | 刘征占 | 4h |
| 13 | 1.2.3 | **基础信息** |  | 12d? | 2011-10-05 | 2011-10-16 |  | 5d |  |  | 郑国江 | 128h |
| 14 | 1.2.3.1 | 设备信息管理 |  | 1d? | 2011-10-13 | 2011-10-13 | 37 | 5d | 0d | start no earlier than 2011-10-13 | 郑国江 | 8h |
| 15 | 1.2.3.2 | 设备日志管理 |  | 1d? | 2011-10-14 | 2011-10-14 | 14 | 5d | 0d | start no earlier than 2011-10-14 | 郑国江 | 8h |
| 16 | 1.2.3.3 | 系统参数配置 |  | 1d | 2011-10-15 | 2011-10-15 | 15 | 5d | 0d | start no earlier than 2011-10-15 | 郑国江 | 8h |
| 17 | 1.2.3.4 | 维护人员管理 |  | 1d | 2011-10-16 | 2011-10-16 | 16 | 5d |  | start no earlier than 2011-10-16 | 郑国江 | 8h |
| 18 | 1.2.3.5 | 数据库备份 | milestone | 0d | 2011-10-05 | 2011-10-05 |  | 12d |  |  |  |  |
| 19 | 1.2.4 | **设备监控** |  | 5d? | 2011-10-08 | 2011-10-12 |  | 3d |  |  | 刘征占; 杨红康 | 152h |
| 20 | 1.2.4.1 | **设备地图信息** |  | 3d? | 2011-10-10 | 2011-10-12 | 6 | 8d | 0d |  | 杨红康 | 48h |
| 21 | 1.2.4.1.1 | 地图定位 |  | 1d | 2011-10-10 | 2011-10-10 |  | 8d | 0d | finish no earlier than 2011-10-10 | 杨红康 | 8h |
| 22 | 1.2.4.1.2 | 仪表盘显示 |  | 1d | 2011-10-11 | 2011-10-11 | 21 | 8d | 0d | start no earlier than 2011-10-11 | 杨红康 | 8h |
| 23 | 1.2.4.1.3 | 悬浮窗体 |  | 1d? | 2011-10-12 | 2011-10-12 | 22 | 8d |  | start no earlier than 2011-10-12 | 杨红康 | 8h |
| 24 | 1.2.4.2 | 设备列表信息 |  | 2d | 2011-10-08 | 2011-10-09 | 5 | 3d | 0d | start no earlier than 2011-10-08 | 刘征占 | 16h |
| 25 | 1.2.4.3 | 设备告警信息 |  | 1d? | 2011-10-10 | 2011-10-10 | 24 | 3d | 0d | start no earlier than 2011-10-10 | 刘征占 | 8h |

| ID | WBS | Task | Type | Duration | Start | Finish | Predecessors | Total slack | Free slack | Constraint | Resources | Work |
| --- | --- | --- | --- | --- | --- | --- | --- | --- | --- | --- | --- | --- |
| 26 | 1.2.5 | **设备详细信息** |  | 7d? | 2011-10-07 | 2011-10-13 |  | 5d |  |  | 杨红康; 郑国江 | 168h |
| 27 | 1.2.5.1 | 设备信息信息(基本信息) |  | 0.5d? | 2011-10-13 | 2011-10-13 | 20 | 8d | 0d | start no earlier than 2011-10-13 | 杨红康 | 4h |
| 28 | 1.2.5.2 | 设备详细信息(维护人员) |  | 0.5d? | 2011-10-13 | 2011-10-13 | 27 | 8d |  | start no earlier than 2011-10-13 | 杨红康 | 4h |
| 29 | 1.2.5.3 | **设备图表** |  | 3d? | 2011-10-07 | 2011-10-09 |  | 5d |  |  | 郑国江 | 48h |
| 30 | 1.2.5.3.1 | 设备曲线图 |  | 1d | 2011-10-07 | 2011-10-07 |  | 5d | 0d | start no earlier than 2011-10-07 | 郑国江 | 8h |
| 31 | 1.2.5.3.2 | 设备柱状图 |  | 1d? | 2011-10-08 | 2011-10-08 | 30 | 5d | 0d | start no earlier than 2011-10-08 | 郑国江 | 8h |
| 32 | 1.2.5.3.3 | 设备水银柱 |  | 1d? | 2011-10-09 | 2011-10-09 | 31 | 5d | 0d | start no earlier than 2011-10-09 | 郑国江 | 8h |
| 33 | 1.2.6 | **数据分析** |  | 3d? | 2011-10-10 | 2011-10-12 |  | 4d |  |  | 刘征占; 郑国江 | 120h |
| 34 | 1.2.6.1 | 设备统计分析 |  | 1d? | 2011-10-10 | 2011-10-10 | 32 | 5d | 0d | start no earlier than 2011-10-10 | 郑国江 | 8h |
| 35 | 1.2.6.2 | **设备对比分析** |  | 2d? | 2011-10-11 | 2011-10-12 |  | 3d |  |  | 刘征占; 郑国江 | 64h |
| 36 | 1.2.6.2.1 | 按时间对比 |  | 2d? | 2011-10-11 | 2011-10-12 | 25 | 3d | 0d | finish no earlier than 2011-10-12 | 刘征占 | 16h |
| 37 | 1.2.6.2.2 | 按设备对比 |  | 2d | 2011-10-11 | 2011-10-12 | 34 | 5d | 0d | start no earlier than 2011-10-11 | 郑国江 | 16h |
| 38 | 1.2.7 | **查询** |  | 2d? | 2011-10-17 | 2011-10-18 |  | 3d |  |  | 刘征占 | 32h |
| 39 | 1.2.7.1 | 告警日志查询 |  | 1d? | 2011-10-17 | 2011-10-17 | 12 | 3d | 0d | finish no earlier than 2011-10-17 | 刘征占 | 8h |
| 40 | 1.2.7.2 | 设备信息查询 |  | 1d? | 2011-10-18 | 2011-10-18 | 39 | 3d |  | start no earlier than 2011-10-18 | 刘征占 | 8h |
| 41 | 1.2.8 | 交付演示系统 | milestone | 0d | 2011-10-22 | 2011-10-22 |  | 0d |  | start no earlier than 2011-10-22 |  |  |
| 46 | 1.2.9 | **正式系统开发** |  | 1d? | 2011-10-05 | 2011-10-05 |  | 16d |  |  |  |  |
| 47 | 1.2.9.1 | 系统交付 |  | 1d? | 2011-10-05 | 2011-10-05 |  | 16d |  |  |  |  |
